# 需求工程甘特图

Schedule from MS Project, 2017-09-28 to 2018-01-17, 2 hours a day, costs in ¥, A marks actual dates.
user

## Calendars

- G23的日历: Mon-Sun 08:00-10:00.

## Resources

| Resource | Rate |
| --- | --- |
| 仲叶 | 30.97 |
| 汪涛 | 30.97 |
| 史晨鑫 | 30.97 |
| 任剑超 | 30.97 |
| 邱英凡 | 30.97 |

## Schedule

| ID | WBS | Task | Type | Duration | Start | Finish | Predecessors | Complete | Remaining | Actual start | Resources | Work | Actual work | Cost | Actual cost |
| --- | --- | --- | --- | --- | --- | --- | --- | --- | --- | --- | --- | --- | --- | --- | --- |
| 1 | 1 | **准备阶段** |  | 34.5d | 2017-09-28 A | 2017-10-28 |  | 72% | 9.66d |  |  | 154h | 84h | 4,769.38 | 2,601.48 |
| 2 | 1.1 | 团队成立 | milestone, manual | 0d | 2017-09-28 A | 2017-09-28 A |  | 100% |  |  |  |  |  |  |  |
| 3 | 1.2 | 小组会议 | milestone, manual | 0d | 2017-09-28 A | 2017-09-28 A |  | 100% |  |  |  |  |  |  |  |
| 4 | 1.3 | 软件安装 | milestone, manual | 0d | 2017-09-29 A | 2017-09-29 A | 2 | 100% |  |  |  |  |  |  |  |
| 5 | 1.4 | 搜集文档模板 | manual | 12d | 2017-09-29 A | 2017-10-10 A | 2 | 100% |  |  | 任剑超 | 24h | 24h | 743.28 | 743.28 |
| 6 | 1.5 | 可行性分析 | manual | 5d | 2017-10-11 A | 2017-10-15 A | 5 | 100% |  |  | 邱英凡; 任剑超; 史晨鑫; 汪涛; 仲叶 | 50h | 50h | 1,548.5 | 1,548.5 |
| 7 | 1.6 | 项目总体计划 | manual | 8d | 2017-10-17 A | 2017-10-24 | 6 | 13% | 7d |  | 邱英凡; 任剑超; 史晨鑫; 汪涛; 仲叶 | 80h | 10h | 2,477.6 | 309.7 |
| 8 | 2 | **计划阶段** |  | 6.5d | 2017-10-25 A | 2017-10-28 A |  | 100% |  |  |  | 22h | 22h | 681.34 | 681.34 |
| 9 | 2.1 | wbs初稿 | manual | 1d | 2017-10-25 A | 2017-10-25 A |  | 100% |  |  |  |  |  |  |  |
| 10 | 2.2 | 项目章程 | manual | 1d | 2017-10-26 A | 2017-10-26 A | 7 | 100% |  |  | 史晨鑫; 汪涛 | 4h | 4h | 123.88 | 123.88 |
| 11 | 2.3 | 需求工程项目计划 | manual | 3d | 2017-10-26 A | 2017-10-28 A | 10 | 100% |  |  | 史晨鑫; 汪涛; 仲叶 | 18h | 18h | 557.46 | 557.46 |
| 12 | 3 | **执行阶段** |  | 51d | 2017-11-01 | 2017-12-21 |  | 42% | 29.59d | 2017-11-02 |  | 150h | 66.76h | 4,645.5 | 2,067.56 |
| 13 | 3.1 | **需求工程** |  | 54.5d | 2017-11-01 | 2017-12-21 |  | 42% | 31.62d | 2017-11-02 |  | 150h | 66.76h | 4,645.5 | 2,067.56 |
| 14 | 3.1.1 | 小组会议 | milestone, manual | 0d | 2017-11-02 A | 2017-11-02 A |  | 100% |  |  |  |  |  |  |  |
| 15 | 3.1.2 | **需求获取** |  | 21d | 2017-11-03 A | 2017-11-23 |  | 55% | 9.36d |  |  | 95h | 60.76h | 2,942.15 | 1,881.74 |
| 16 | 3.1.2.1 | 小组会议 | manual | 1d | 2017-11-03 A | 2017-11-03 A |  | 100% |  |  |  |  |  |  |  |
| 17 | 3.1.2.2 | 项目章程 | manual | 1d | 2017-11-03 A | 2017-11-03 A |  | 100% |  |  | 邱英凡; 任剑超; 史晨鑫; 汪涛; 仲叶 | 10h | 10h | 309.7 | 309.7 |
| 18 | 3.1.2.3 | 定义愿景和范围 | manual | 8d | 2017-11-03 A | 2017-11-10 A | 10 | 100% |  |  | 邱英凡 [20%]; 任剑超 [20%] | 6.4h | 6.4h | 198.21 | 198.21 |
| 19 | 3.1.2.4 | 小组会议 | manual | 1d | 2017-11-05 A | 2017-11-05 A |  | 100% |  |  |  |  |  |  |  |
| 20 | 3.1.2.5 | 识别用户群、选择产品代言人 |  | 6d | 2017-11-11 A | 2017-11-16 A | 18 | 100% |  |  | 史晨鑫 [20%]; 汪涛 [20%] | 4.8h | 4.8h | 148.66 | 148.66 |
| 21 | 3.1.2.6 | 小组会议 | manual | 1d | 2017-11-10 A | 2017-11-10 A |  | 100% |  |  |  |  |  |  |  |
| 22 | 3.1.2.7 | 组织焦点小组 | manual | 4d | 2017-11-08 A | 2017-11-11 A | 18 | 100% |  |  | 邱英凡 [20%]; 仲叶 [20%] | 3h | 3h | 92.91 | 92.91 |
| 23 | 3.1.2.8 | 小组会议 | milestone, manual | 0d | 2017-11-13 A | 2017-11-13 A |  | 100% |  |  |  |  |  |  |  |
| 24 | 3.1.2.9 | 识别用户需求 | manual | 8d | 2017-11-08 A | 2017-11-16 A | 18 | 100% |  |  | 任剑超 [20%]; 史晨鑫 [20%] | 6.4h | 6.4h | 198.21 | 198.21 |
| 25 | 3.1.2.10 | 小组会议 | milestone, manual | 0d | 2017-11-17 A | 2017-11-17 A |  | 100% |  |  |  |  |  |  |  |
| 26 | 3.1.2.11 | 需求获取访谈 | manual | 28d | 2017-11-13 A | 2017-12-10 | 24 | 7% | 26d |  | 汪涛 [20%]; 仲叶 [20%] | 22.4h | 1.6h | 693.73 | 49.55 |
| 27 | 3.1.2.12 | 举行需求获取讨论会 | manual | 2d | 2017-11-09 A | 2017-11-10 A | 25 | 100% |  |  | 邱英凡 [10%]; 任剑超 [10%]; 史晨鑫 [10%]; 汪涛 [10%]; 仲叶 [10%] | 2h | 2h | 61.94 | 61.94 |
| 28 | 3.1.2.13 | 分发调查问卷 | manual | 3d | 2017-11-09 A | 2017-11-11 A | 25 | 100% |  |  | 仲叶 [20%] | 1.2h | 1.2h | 37.16 | 37.16 |
| 29 | 3.1.2.14 | 分析文档 | manual | 8d | 2017-11-12 A | 2017-11-19 A | 28 | 100% |  |  | 任剑超 [20%]; 史晨鑫 [20%]; 汪涛 [20%] | 9.6h | 9.6h | 297.31 | 297.31 |
| 30 | 3.1.2.15 | 重用已有的需求 | manual | 24d | 2017-11-15 A | 2017-12-08 | 25 | 30% | 16.8d |  | 邱英凡 [20%]; 任剑超 [20%] | 19.2h | 5.76h | 594.62 | 178.39 |
| 31 | 3.1.2.16 | 项目章程 | manual | 1d | 2017-11-18 A | 2017-11-18 A |  | 100% |  |  | 邱英凡; 任剑超; 史晨鑫; 汪涛; 仲叶 | 10h | 10h | 309.7 | 309.7 |

Notes:
- 5: 任剑超
- 6: 任剑超
- 7: 任剑超
- 17: 任剑超
- 31: 任剑超

| ID | WBS | Task | Type | Duration | Start | Finish | Predecessors | Complete | Remaining | Total slack | Constraint | Resources | Work | Actual work | Cost | Actual cost |
| --- | --- | --- | --- | --- | --- | --- | --- | --- | --- | --- | --- | --- | --- | --- | --- | --- |
| 32 | 3.1.3 | **需求分析** |  | 18d | 2017-11-24 A | 2017-12-11 |  | 40% | 10.8d |  |  |  | 16h | 6h | 495.52 | 185.82 |
| 33 | 3.1.3.1 | 小组会议 | milestone, manual | 0d | 2017-11-24 A | 2017-11-24 A |  | 100% |  |  |  |  |  |  |  |  |
| 34 | 3.1.3.2 | 应用环境建模 | manual | 2d | 2017-11-24 A | 2017-11-25 A | 29 | 100% |  |  |  | 任剑超 [25%]; 史晨鑫 [25%] | 2h | 2h | 61.94 | 61.94 |
| 35 | 3.1.3.3 | 创建原型 | manual | 2d | 2017-11-26 A | 2017-11-27 A | 29 | 100% |  |  |  | 史晨鑫 [25%]; 汪涛 [25%] | 2h | 2h | 61.94 | 61.94 |
| 36 | 3.1.3.4 | 小组会议 | milestone, manual | 0d | 2017-11-27 A | 2017-11-27 A |  | 100% |  |  |  |  |  |  |  |  |
| 37 | 3.1.3.5 | 分析实现可行性 | manual | 2d | 2017-11-28 A | 2017-11-29 A | 29 | 100% |  |  |  | 史晨鑫 [25%]; 仲叶 [25%] | 2h | 2h | 61.94 | 61.94 |
| 38 | 3.1.3.6 | 排列需求优先级 | manual | 1d | 2017-12-01 | 2017-12-01 | 29 |  |  |  |  | 任剑超 [25%]; 汪涛 [25%] | 1h |  | 30.97 |  |
| 39 | 3.1.3.7 | 小组会议 | milestone, manual | 0d | 2017-12-01 | 2017-12-01 |  |  |  |  |  |  |  |  |  |  |
| 40 | 3.1.3.8 | 创建数字字典 | manual | 2d | 2017-12-03 | 2017-12-04 | 38 |  |  |  |  | 邱英凡 [25%]; 任剑超 [25%] | 2h |  | 61.94 |  |
| 41 | 3.1.3.9 | 小组会议 | milestone, manual | 0d | 2017-12-04 | 2017-12-04 |  |  |  |  |  |  |  |  |  |  |
| 42 | 3.1.3.10 | 需求建模 | manual | 2d | 2017-12-05 | 2017-12-06 | 34 |  |  |  |  | 邱英凡 [25%]; 任剑超 [25%]; 仲叶 [25%] | 3h |  | 92.91 |  |
| 43 | 3.1.3.11 | 小组会议 | milestone, manual | 0d | 2017-12-06 | 2017-12-06 |  |  |  |  |  |  |  |  |  |  |
| 44 | 3.1.3.12 | 分析接口 | manual | 2d | 2017-12-07 | 2017-12-08 | 42 |  |  |  |  | 任剑超 [25%]; 史晨鑫 [25%] | 2h |  | 61.94 |  |
| 45 | 3.1.3.13 | 小组会议 | milestone, manual | 0d | 2017-12-09 | 2017-12-09 |  |  |  |  |  |  |  |  |  |  |
| 46 | 3.1.3.14 | 将需求分配到子接口 | manual | 2d | 2017-12-09 | 2017-12-10 | 44 |  |  |  |  | 汪涛 [25%]; 仲叶 [25%] | 2h |  | 61.94 |  |
| 47 | 3.1.4 | 小组会议 | milestone, manual | 0d | 2017-12-10 | 2017-12-10 |  |  |  |  |  |  |  |  |  |  |
| 48 | 3.1.5 | **规范说明** |  | 16d | 2017-12-15 | 2017-12-30 |  |  |  |  |  |  | 19h |  | 588.43 |  |
| 49 | 3.1.5.1 | 小组会议 | milestone, manual | 0d | 2017-12-15 | 2017-12-15 |  |  |  |  |  |  |  |  |  |  |
| 50 | 3.1.5.2 | 采用需求文档模板 | manual | 1d | 2017-12-15 | 2017-12-15 | 29 |  |  |  |  | 任剑超 [25%]; 汪涛 [25%]; 仲叶 [25%] | 1.5h |  | 46.45 |  |
| 51 | 3.1.5.3 | 识别需求源头 | manual | 1d | 2017-12-16 | 2017-12-16 | 35 |  |  |  |  | 邱英凡 [25%]; 仲叶 [25%]; 任剑超 [25%] | 1.5h |  | 46.45 |  |
| 52 | 3.1.5.4 | 小组会议 |  | 1d | 2017-12-16 | 2017-12-16 |  |  |  | 32d | start no earlier than 2017-12-16 |  |  |  |  |  |
| 53 | 3.1.5.5 | 为每个需求分配唯一标识 | manual | 1d | 2017-12-17 | 2017-12-17 | 51 |  |  |  |  | 邱英凡 [25%]; 史晨鑫 [25%]; 仲叶 [25%] | 1.5h |  | 46.45 |  |
| 54 | 3.1.5.6 | 记录业务规则 | manual | 1d | 2017-12-18 | 2017-12-18 |  |  |  |  |  | 任剑超 [25%]; 汪涛 [25%]; 邱英凡 [25%] | 1.5h |  | 46.45 |  |
| 55 | 3.1.5.7 | 小组会议 |  | 1d | 2017-12-19 | 2017-12-19 |  |  |  | 29d | start no earlier than 2017-12-19 |  |  |  |  |  |
| 56 | 3.1.5.8 | 描述非功能性需求 | manual | 2d | 2017-12-20 | 2017-12-21 | 51 |  |  |  |  | 史晨鑫 [25%]; 汪涛 [25%]; 邱英凡 [25%] | 3h |  | 92.91 |  |
| 57 | 3.1.5.9 | 小组会议 | manual | 1d | 2017-12-22 | 2017-12-22 |  |  |  |  |  |  |  |  |  |  |
| 58 | 3.1.5.10 | 需求功能说明书 | manual | 4d | 2017-12-14 | 2017-12-17 | 50 |  |  |  |  | 邱英凡 [25%]; 任剑超 [25%]; 史晨鑫 [25%]; 汪涛 [25%]; 仲叶 [25%] | 10h |  | 309.7 |  |
| 59 | 3.1.5.11 | 小组会议 | milestone, manual | 0d | 2017-12-08 | 2017-12-08 |  |  |  |  |  |  |  |  |  |  |
| 60 | 3.1.5.12 | 小组会议 | milestone, manual | 0d | 2017-12-09 | 2017-12-09 |  |  |  |  |  |  |  |  |  |  |
| 61 | 3.1.5.13 | 小组会议 | milestone, manual | 0d | 2017-12-10 | 2017-12-10 |  |  |  |  |  |  |  |  |  |  |

| ID | WBS | Task | Type | Duration | Start | Finish | Predecessors | Resources | Work | Cost |
| --- | --- | --- | --- | --- | --- | --- | --- | --- | --- | --- |
| 62 | 3.1.6 | **需求验证** |  | 12.5d | 2017-12-11 | 2017-12-19 |  |  | 20h | 619.4 |
| 63 | 3.1.6.1 | 小组会议 | manual | 1d | 2017-12-11 | 2017-12-11 |  |  |  |  |
| 64 | 3.1.6.2 | 评审需求 | manual | 4d | 2017-11-24 | 2017-11-27 | 50 | 任剑超 [25%]; 邱英凡 [25%] | 4h | 123.88 |
| 65 | 3.1.6.3 | 小组会议 | milestone, manual | 0d | 2017-12-12 | 2017-12-12 |  |  |  |  |
| 66 | 3.1.6.4 | 测试需求 | manual | 4d | 2017-11-24 | 2017-11-27 | 50 | 史晨鑫 [25%]; 汪涛 [25%]; 仲叶 [25%] | 6h | 185.82 |
| 67 | 3.1.6.5 | 小组会议 | milestone, manual | 0d | 2017-12-13 | 2017-12-13 |  |  |  |  |
| 68 | 3.1.6.6 | 定义验收条件 | manual | 4d | 2017-11-28 | 2017-12-01 | 64 | 邱英凡 [25%]; 任剑超 [25%] | 4h | 123.88 |
| 69 | 3.1.6.7 | 小组会议 | milestone, manual | 0d | 2017-12-14 | 2017-12-14 |  |  |  |  |
| 70 | 3.1.6.8 | 模拟需求 | manual | 4d | 2017-12-02 | 2017-12-05 | 68 | 史晨鑫 [25%]; 汪涛 [25%]; 仲叶 [25%] | 6h | 185.82 |
| 71 | 3.1.6.9 | 小组会议 | milestone, manual | 0d | 2017-12-16 | 2017-12-16 |  |  |  |  |
| 72 | 3.1.6.10 | 小组会议 | milestone, manual | 0d | 2017-12-16 | 2017-12-16 |  |  |  |  |
| 73 | 4 | **管理阶段** |  | 30.5d | 2017-12-17 | 2018-01-12 |  |  | 59.5h | 1,842.71 |
| 74 | 4.1 | 小组会议 | milestone, manual | 0d | 2017-12-17 | 2017-12-17 |  |  |  |  |
| 75 | 4.2 | **需求管理** |  | 12.5d | 2017-12-17 | 2017-12-25 |  |  | 20.5h | 634.88 |
| 76 | 4.2.1 | 建立变更控制流程 | manual | 2d | 2017-12-17 | 2017-12-18 | 50 | 邱英凡 [25%]; 汪涛 [25%]; 仲叶 [25%] | 3h | 92.91 |
| 77 | 4.2.2 | 分析变更影响 | manual | 2d | 2017-12-19 | 2017-12-20 | 76 | 任剑超 [25%]; 史晨鑫 [25%]; 仲叶 [25%] | 3h | 92.91 |
| 78 | 4.2.3 | 小组会议 | manual | 1d | 2017-12-18 | 2017-12-18 |  |  |  |  |
| 79 | 4.2.4 | 建立基线，管理需求版本 | manual | 2d | 2017-12-19 | 2017-12-20 | 50 | 任剑超 [25%]; 汪涛 [25%] | 2h | 61.94 |
| 80 | 4.2.5 | 小组会议 | manual | 1d | 2017-12-20 | 2017-12-20 |  |  |  |  |
| 81 | 4.2.6 | 维护变更历史 | manual | 2d | 2017-12-20 | 2017-12-21 | 76 | 邱英凡 [25%]; 史晨鑫 [25%]; 仲叶 [25%] | 3h | 92.91 |
| 82 | 4.2.7 | 小组会议 | milestone, manual | 0d | 2017-12-20 | 2017-12-20 |  |  |  |  |
| 83 | 4.2.8 | 跟踪需求状态 | manual | 1d | 2017-12-21 | 2017-12-21 |  | 汪涛 [25%]; 仲叶 [25%]; 邱英凡 [25%] | 1.5h | 46.45 |
| 84 | 4.2.9 | 小组会议 | milestone, manual | 0d | 2017-12-21 | 2017-12-21 |  |  |  |  |
| 85 | 4.2.10 | 跟踪需求问题 | manual | 1d | 2017-12-22 | 2017-12-22 |  | 邱英凡 [25%]; 史晨鑫 [25%]; 仲叶 [25%] | 1.5h | 46.45 |
| 86 | 4.2.11 | 小组会议 | milestone, manual | 0d | 2017-12-22 | 2017-12-22 |  |  |  |  |
| 87 | 4.2.12 | 维护需求可跟踪矩阵 | manual | 1d | 2017-12-23 | 2017-12-23 |  | 邱英凡 [25%]; 任剑超 [25%]; 史晨鑫 [25%] | 1.5h | 46.45 |
| 88 | 4.2.13 | 小组会议 | milestone, manual | 0d | 2017-12-23 | 2017-12-23 |  |  |  |  |
| 89 | 4.2.14 | 使用需求管理工具 | manual | 2d | 2017-12-24 | 2017-12-25 | 42 | 邱英凡 [25%]; 任剑超 [25%]; 史晨鑫 [25%]; 汪涛 [25%]; 仲叶 [25%] | 5h | 154.85 |
| 90 | 4.2.15 | 小组会议 | manual | 1d | 2017-12-24 | 2017-12-24 |  |  |  |  |
| 91 | 4.3 | 小组会议 | manual | 1d | 2017-12-25 | 2017-12-25 |  |  |  |  |

| ID | WBS | Task | Type | Duration | Start | Finish | Predecessors | Resources | Work | Cost |
| --- | --- | --- | --- | --- | --- | --- | --- | --- | --- | --- |
| 92 | 4.4 | **需求知识** |  | 6d | 2017-12-25 | 2017-12-30 |  |  | 9h | 278.73 |
| 93 | 4.4.1 | 培训业务分析师 | manual | 1d | 2017-12-25 | 2017-12-25 |  | 汪涛 [25%]; 仲叶 [25%] | 1h | 30.97 |
| 94 | 4.4.2 | 小组会议 | manual | 1d | 2017-12-26 | 2017-12-26 |  |  |  |  |
| 95 | 4.4.3 | 向干系人讲解需求内容 | manual | 2d | 2017-12-26 | 2017-12-27 |  | 任剑超 [25%]; 史晨鑫 [25%] | 2h | 61.94 |
| 96 | 4.4.4 | 小组会议 | manual | 1d | 2017-12-27 | 2017-12-27 |  |  |  |  |
| 97 | 4.4.5 | 向开发人员讲应用领域知识 | manual | 1d | 2017-12-27 | 2017-12-27 |  | 邱英凡 [25%] | 0.5h | 15.48 |
| 98 | 4.4.6 | 小组会议 | manual | 1d | 2017-12-28 | 2017-12-28 |  |  |  |  |
| 99 | 4.4.7 | 定义一个需求工程流程 | manual | 3d | 2017-12-26 | 2017-12-28 | 93 | 邱英凡 [25%]; 史晨鑫 [25%]; 仲叶 [25%] | 4.5h | 139.37 |
| 100 | 4.4.8 | 小组会议 | milestone, manual | 0d | 2017-12-29 | 2017-12-29 |  |  |  |  |
| 101 | 4.4.9 | 建立一个词汇表 | manual | 1d | 2017-12-29 | 2017-12-29 |  | 任剑超 [25%]; 汪涛 [25%] | 1h | 30.97 |
| 102 | 4.4.10 | 小组会议 | manual | 1d | 2017-12-30 | 2017-12-30 |  |  |  |  |
| 103 | 4.5 | **项目管理** |  | 14d | 2017-12-30 | 2018-01-12 |  |  | 30h | 929.1 |
| 104 | 4.5.1 | 选择合适的生命周期模型 | manual | 1d | 2017-12-30 | 2017-12-30 |  | 邱英凡 [25%]; 汪涛 [25%]; 仲叶 [25%] | 1.5h | 46.45 |
| 105 | 4.5.2 | 小组会议 | manual | 1d | 2017-12-31 | 2017-12-31 |  |  |  |  |
| 106 | 4.5.3 | 规划需求方案 | manual | 8d | 2017-12-29 | 2018-01-05 | 99 | 任剑超 [25%]; 史晨鑫 [25%]; 汪涛 [25%] | 12h | 371.64 |
| 107 | 4.5.4 | 小组会议 | milestone, manual | 0d | 2018-01-01 | 2018-01-01 |  |  |  |  |
| 108 | 4.5.5 | 小组会议 | milestone, manual | 0d | 2018-01-02 | 2018-01-02 |  |  |  |  |
| 109 | 4.5.6 | 小组会议 | milestone, manual | 0d | 2018-01-03 | 2018-01-03 |  |  |  |  |
| 110 | 4.5.7 | 估算需求工作量 | manual | 2d | 2018-01-06 | 2018-01-07 | 106 | 邱英凡 [25%]; 汪涛 [25%] | 2h | 61.94 |
| 111 | 4.5.8 | 小组会议 | manual | 1d | 2018-01-06 | 2018-01-06 |  |  |  |  |
| 112 | 4.5.9 | 基于需求做计划 | manual | 2d | 2018-01-06 | 2018-01-07 | 106 | 汪涛 [25%]; 仲叶 [25%] | 2h | 61.94 |
| 113 | 4.5.10 | 小组会议 | manual | 1d | 2018-01-05 | 2018-01-05 |  |  |  |  |
| 114 | 4.5.11 | 发现需求决策者 | manual | 1d | 2018-01-06 | 2018-01-06 |  | 邱英凡 [25%]; 汪涛 [25%]; 仲叶 [25%] | 1.5h | 46.45 |
| 115 | 4.5.12 | 小组会议 | manual | 1d | 2018-01-06 | 2018-01-06 |  |  |  |  |
| 116 | 4.5.13 | 小组会议 | manual | 1d | 2018-01-07 | 2018-01-07 |  |  |  |  |
| 117 | 4.5.14 | 重新协商承诺 | manual | 2d | 2018-01-07 | 2018-01-08 | 116 | 邱英凡 [25%]; 仲叶 [25%] | 2h | 61.94 |
| 118 | 4.5.15 | 小组会议 | manual | 1d | 2018-01-08 | 2018-01-08 |  |  |  |  |
| 119 | 4.5.16 | 管理需求风险 | manual | 2d | 2018-01-09 | 2018-01-10 | 106 | 邱英凡 [25%]; 仲叶 [25%] | 2h | 61.94 |
| 120 | 4.5.17 | 小组会议 | manual | 1d | 2018-01-09 | 2018-01-09 |  |  |  |  |
| 121 | 4.5.18 | 跟踪记录需求工作量 | manual | 2d | 2018-01-09 | 2018-01-10 | 120 | 任剑超 [25%]; 仲叶 [25%] | 2h | 61.94 |
| 122 | 4.5.19 | 小组会议 | manual | 1d | 2018-01-10 | 2018-01-10 |  |  |  |  |
| 123 | 4.5.20 | 小组会议 | manual | 1d | 2018-01-11 | 2018-01-11 |  |  |  |  |
| 124 | 4.5.21 | 回顾学到的经验 | manual | 1d | 2018-01-11 | 2018-01-11 | 123 | 邱英凡 [50%]; 任剑超 [50%]; 史晨鑫 [50%]; 汪涛 [50%]; 仲叶 [50%] | 5h | 154.85 |
| 125 | 4.5.22 | 小组会议 | milestone, manual | 0d | 2018-01-12 | 2018-01-12 |  |  |  |  |

| ID | WBS | Task | Type | Duration | Start | Finish | Predecessors | Resources | Work | Cost |
| --- | --- | --- | --- | --- | --- | --- | --- | --- | --- | --- |
| 126 | 5 | **收尾阶段** |  | 9.5d | 2018-01-12 | 2018-01-17 |  |  | 40h | 1,238.8 |
| 127 | 5.1 | 小组会议 | milestone, manual | 0d | 2018-01-13 | 2018-01-13 |  |  |  |  |
| 128 | 5.2 | 小组会议 | milestone, manual | 0d | 2018-01-14 | 2018-01-14 |  |  |  |  |
| 129 | 5.3 | 各文档检查 | manual | 4d | 2018-01-12 | 2018-01-15 | 124 | 邱英凡 [50%]; 任剑超 [50%]; 史晨鑫 [50%]; 汪涛 [50%]; 仲叶 [50%] | 20h | 619.4 |
| 130 | 5.4 | 小组会议 | milestone, manual | 0d | 2018-01-15 | 2018-01-15 |  |  |  |  |
| 131 | 5.5 | 小组会议 | milestone, manual | 0d | 2018-01-16 | 2018-01-16 |  |  |  |  |
| 132 | 5.6 | 整理文档 | manual | 2d | 2018-01-16 | 2018-01-17 | 129 | 邱英凡; 任剑超; 史晨鑫; 汪涛; 仲叶 | 20h | 619.4 |
